# Proyect1

Schedule from MS Project, 2014-10-06 to 2015-04-20, 4 hours a day, costs in €.

## Calendars

- Estándar: Mon-Fri 09:00-13:00, 15:00-19:00; Sat-Sun off. Exceptions (off unless hours are given): 2014-12-01 to 2015-01-30 (Vacaciones Decembrina, recurring), 2015-02-23 to 2015-03-06 (Dias de duelo).

## Resources

| Resource | Rate |
| --- | --- |
| Maria Chacon | 100 |
| Domingo Hernandez | 100 |
| Yonathan Rivas | 100 |

## Schedule

| ID | WBS | Task | Duration | Start | Finish | Predecessors | Total slack | Resources | Work | Cost |
| --- | --- | --- | --- | --- | --- | --- | --- | --- | --- | --- |
| 1 | 1 | **HITO 1** | 100.94d | 2014-10-06 | 2015-02-16 |  | 0d | Domingo Hernandez; Maria Chacon; Yonathan Rivas | 4607.66h | 460,766 |
| 2 | 1.1 | **Fase Inicio** | 15.33d | 2014-10-06 | 2014-10-15 |  | 0d | Domingo Hernandez; Maria Chacon; Yonathan Rivas | 245.33h | 24,533.33 |
| 3 | 1.1.1 | Prototipo de Pantalla | 15.33h | 2014-10-06 | 2014-10-07 |  | 0d | Domingo Hernandez; Yonathan Rivas | 30.67h | 3,066.67 |
| 4 | 1.1.2 | Flujo Trabajo requerimiento | 15.33h | 2014-10-07 | 2014-10-09 | 3 | 0d |  |  |  |
| 5 | 1.1.3 | Documento según la IEEE | 30.67h | 2014-10-09 | 2014-10-15 | 4 | 0d | Maria Chacon | 30.67h | 3,066.67 |
| 6 | 1.2 | **Fase de Analisis** | 54.94d | 2014-10-15 | 2014-11-24 | 2 | 0d | Domingo Hernandez; Maria Chacon; Yonathan Rivas | 1541h | 154,099.67 |
| 7 | 1.2.1 | Identificacion de requisitos | 25.55h | 2014-10-15 | 2014-10-20 |  | 0d | Domingo Hernandez; Maria Chacon; Yonathan Rivas | 76.67h | 7,666.67 |
| 8 | 1.2.2 | Requisitos funcionales | 15.33h | 2014-10-20 | 2014-10-22 | 7 | 0d | Maria Chacon; Yonathan Rivas | 30.67h | 3,066.67 |
| 9 | 1.2.3 | Requisitos no funcionales | 30.67h | 2014-10-22 | 2014-10-28 | 8 | 0d | Domingo Hernandez | 30.67h | 3,066.67 |
| 10 | 1.2.4 | Historia de usuarios | 25.55h | 2014-10-28 | 2014-10-31 | 9 | 0d | Domingo Hernandez; Maria Chacon; Yonathan Rivas | 76.67h | 7,666.67 |
| 11 | 1.2.5 | **Flujo Trabajo Requerimientos** | 15.33d | 2014-10-31 | 2014-11-12 | 10 | 0d | Domingo Hernandez; Maria Chacon; Yonathan Rivas | 245.33h | 24,533.33 |
| 12 | 1.2.5.1 | Matriz de trazabilidad | 30.67h | 2014-10-31 | 2014-11-06 |  | 0d |  |  |  |
| 13 | 1.2.5.2 | Adaptar Documento de requisitos | 30.67h | 2014-11-06 | 2014-11-12 | 12 | 0d | Maria Chacon; Yonathan Rivas | 61.33h | 6,133.33 |
| 14 | 1.2.6 | **Gestion de Proyecto** | 15.33d | 2014-11-12 | 2014-11-24 | 11 | 0d | Domingo Hernandez; Maria Chacon; Yonathan Rivas | 421.67h | 42,166.67 |
| 15 | 1.2.6.1 | **Gestión de Tiempo** | 3.83d | 2014-11-12 | 2014-11-14 |  | 0d | Domingo Hernandez; Maria Chacon; Yonathan Rivas | 69h | 6,900 |
| 16 | 1.2.6.1.1 | Planificacion en Project analisis con PERT | 15.33h | 2014-11-12 | 2014-11-14 |  | 0d | Maria Chacon [150%] | 23h | 2,300 |
| 17 | 1.2.6.2 | **Gestion de Riesgos** | 7.67d | 2014-11-14 | 2014-11-20 | 15 | 0d | Domingo Hernandez; Maria Chacon; Yonathan Rivas | 92h | 9,200 |
| 18 | 1.2.6.2.1 | Matriz de Riesgos | 15.33h | 2014-11-14 | 2014-11-18 |  | 0d |  |  |  |
| 19 | 1.2.6.2.2 | Metodologia de Ishikawa | 15.33h | 2014-11-18 | 2014-11-20 | 18 | 0d |  |  |  |
| 20 | 1.2.6.3 | **Gestion de Costos** | 3.83d | 2014-11-20 | 2014-11-24 | 17 | 0d | Domingo Hernandez; Maria Chacon; Yonathan Rivas | 76.67h | 7,666.67 |
| 21 | 1.2.6.3.1 | Puntos de Funcion | 15.33h | 2014-11-20 | 2014-11-24 |  | 0d | Domingo Hernandez; Yonathan Rivas | 30.67h | 3,066.67 |
| 22 | 1.3 | **Fase de Elaboracion** | 30.67d | 2014-11-24 | 2015-02-16 | 6 | 0d | Domingo Hernandez; Maria Chacon; Yonathan Rivas | 1610h | 161,000 |
| 23 | 1.3.1 | **Flujo de Trabajo** | 30.67d | 2014-11-24 | 2015-02-16 |  | 0d | Domingo Hernandez; Maria Chacon; Yonathan Rivas | 1242h | 124,200 |
| 24 | 1.3.1.1 | **Elaborar prototipo funcional** | 30.67d | 2014-11-24 | 2015-02-16 |  | 0d | Maria Chacon; Domingo Hernandez; Yonathan Rivas | 874h | 87,400 |
| 25 | 1.3.1.1.1 | **Mantenimiento y Gestión de usuarios** | 19.17d | 2014-11-24 | 2015-02-06 |  | 0d | Domingo Hernandez; Maria Chacon; Yonathan Rivas | 260.67h | 26,066.67 |
| 26 | 1.3.1.1.1.1 | RF3 - Registro de usuario | 15.33h | 2014-11-24 | 2014-11-26 |  | 0d | Domingo Hernandez | 15.33h | 1,533.33 |
| 27 | 1.3.1.1.1.2 | RF4 -Modificación del perfil de usuario | 15.33h | 2014-11-26 | 2014-11-27 | 26 | 0d |  |  |  |
| 28 | 1.3.1.1.1.3 | RF5 - Iniciar Sesión | 15.33h | 2014-11-27 | 2015-02-02 | 27 | 0d |  |  |  |
| 29 | 1.3.1.1.1.4 | RF6- Cerrar Sesión | 15.33h | 2015-02-02 | 2015-02-04 | 28 | 0d |  |  |  |
| 30 | 1.3.1.1.1.5 | RF18 - Cancelación de viaje por parte del usuario | 15.33h | 2015-02-04 | 2015-02-06 | 29 | 0d | Yonathan Rivas | 15.33h | 1,533.33 |

| ID | WBS | Task | Duration | Start | Finish | Predecessors | Total slack | Resources | Work | Cost |
| --- | --- | --- | --- | --- | --- | --- | --- | --- | --- | --- |
| 31 | 1.3.1.1.2 | **Mantenimiento y Gestión de reservas** | 11.5d | 2015-02-06 | 2015-02-16 | 25 | 0d | Domingo Hernandez; Maria Chacon; Yonathan Rivas | 245.33h | 24,533.33 |
| 32 | 1.3.1.1.2.1 | RF7 - Registrar reserva | 15.33h | 2015-02-06 | 2015-02-10 |  | 0d | Maria Chacon; Yonathan Rivas | 30.67h | 3,066.67 |
| 33 | 1.3.1.1.2.2 | RF9 - Modificación de reservación | 15.33h | 2015-02-10 | 2015-02-12 | 32 | 0d | Yonathan Rivas; Domingo Hernandez | 30.67h | 3,066.67 |
| 34 | 1.3.1.1.2.3 | RF16 - Disponibilidad de reserva | 15.33h | 2015-02-12 | 2015-02-16 | 33 | 0d | Domingo Hernandez; Yonathan Rivas; Maria Chacon | 46h | 4,600 |
| 35 | 2 | **HITO 2** | 48.56d? | 2015-02-16 | 2015-04-03 | 1 | 0d | Domingo Hernandez; Maria Chacon; Yonathan Rivas | 2576h | 257,599.83 |
| 36 | 2.1 | Fase de Analisis | 6.39d? | 2015-02-16 | 2015-02-19 |  | 0d | Domingo Hernandez; Maria Chacon; Yonathan Rivas | 76.67h | 7,666.67 |
| 37 | 2.2 | **Fase de Elaboracion** | 42.17d | 2015-02-19 | 2015-04-03 | 36 | 0d | Domingo Hernandez; Maria Chacon; Yonathan Rivas | 1916.67h | 191,666.67 |
| 38 | 2.2.1 | **Flujo de Trabajo** | 30.67d | 2015-02-19 | 2015-03-26 |  | 0d | Domingo Hernandez; Maria Chacon; Yonathan Rivas | 1303.33h | 130,333.33 |
| 39 | 2.2.1.1 | **Elaborar prototipo funcional** | 30.67d | 2015-02-19 | 2015-03-26 |  | 0d | Domingo Hernandez; Maria Chacon; Yonathan Rivas | 935.33h | 93,533.33 |
| 40 | 2.2.1.1.1 | **Mantenimiento y Gestión de usuarios** | 15.33d | 2015-02-19 | 2015-03-17 |  | 0d | Domingo Hernandez; Maria Chacon; Yonathan Rivas | 291.33h | 29,133.33 |
| 41 | 2.2.1.1.1.1 | RF19 - Consulta de destino | 15.33h | 2015-02-19 | 2015-03-09 |  | 0d | Domingo Hernandez; Maria Chacon; Yonathan Rivas | 46h | 4,600 |
| 42 | 2.2.1.1.1.2 | RF22 - Agregar pasajero | 15.33h | 2015-03-09 | 2015-03-11 | 41 | 0d | Maria Chacon; Yonathan Rivas | 30.67h | 3,066.67 |
| 43 | 2.2.1.1.1.3 | RF23 - Modificar pasajero | 15.33h | 2015-03-11 | 2015-03-13 | 42 | 0d | Domingo Hernandez | 15.33h | 1,533.33 |
| 44 | 2.2.1.1.1.4 | RF24 - Consulta de promociones | 15.33h | 2015-03-13 | 2015-03-17 | 43 | 0d | Domingo Hernandez | 15.33h | 1,533.33 |
| 45 | 2.2.1.1.2 | **Mantenimiento y Gestión de reservas** | 3.83d | 2015-03-17 | 2015-03-19 | 40 | 0d | Domingo Hernandez; Maria Chacon; Yonathan Rivas | 76.67h | 7,666.67 |
| 46 | 2.2.1.1.2.1 | RF21 - Anulación de reserva automática | 15.33h | 2015-03-17 | 2015-03-19 |  | 0d | Yonathan Rivas; Domingo Hernandez | 30.67h | 3,066.67 |
| 47 | 2.2.1.1.3 | **Gestión de pago de reservación** | 7.67d | 2015-03-19 | 2015-03-25 | 45 | 0d | Domingo Hernandez; Maria Chacon; Yonathan Rivas | 122.67h | 12,266.67 |
| 48 | 2.2.1.1.3.1 | RF8 - Pago de reservación de viaje | 15.33h | 2015-03-19 | 2015-03-23 |  | 0d | Yonathan Rivas | 15.33h | 1,533.33 |
| 49 | 2.2.1.1.3.2 | RF17- Confirmación de pagos | 15.33h | 2015-03-23 | 2015-03-25 | 48 | 0d | Yonathan Rivas | 15.33h | 1,533.33 |
| 50 | 2.2.1.1.4 | **Impresión de planilla de reservación** | 3.83d | 2015-03-25 | 2015-03-26 | 47 | 0d | Domingo Hernandez; Maria Chacon; Yonathan Rivas | 76.67h | 7,666.67 |
| 51 | 2.2.1.1.4.1 | RF11-Planilla de confirmación de viaje | 15.33h | 2015-03-25 | 2015-03-26 |  | 0d | Domingo Hernandez; Yonathan Rivas | 30.67h | 3,066.67 |
| 52 | 2.2.2 | **Fase de pruebas** | 11.5d | 2015-03-26 | 2015-04-03 | 38 | 0d |  | 107.33h | 10,733.33 |
| 53 | 2.2.2.1 | Plan de pruebas | 15.33h | 2015-03-26 | 2015-03-30 |  | 0d | Maria Chacon | 15.33h | 1,533.33 |
| 54 | 2.2.2.2 | Casos de prueba | 15.33h | 2015-03-30 | 2015-04-01 | 53 | 0d | Maria Chacon | 15.33h | 1,533.33 |
| 55 | 2.2.2.3 | Resultados de las Pruebas | 15.33h | 2015-04-01 | 2015-04-03 | 54 | 0d | Maria Chacon [500%] | 76.67h | 7,666.67 |

| ID | WBS | Task | Duration | Start | Finish | Predecessors | Total slack | Resources | Work | Cost |
| --- | --- | --- | --- | --- | --- | --- | --- | --- | --- | --- |
| 56 | 3 | **HITO 3** | 22.5d | 2015-04-03 | 2015-04-20 | 35 | 0d | Domingo Hernandez; Maria Chacon; Yonathan Rivas | 1282h | 130,311.11 |
| 57 | 3.1 | **Fase de Elaboracion** | 22.5d | 2015-04-03 | 2015-04-20 |  | 0d | Domingo Hernandez; Maria Chacon; Yonathan Rivas | 1012h | 103,311.11 |
| 58 | 3.1.1 | **Flujo de Trabajo** | 14d | 2015-04-03 | 2015-04-14 |  | 0d | Domingo Hernandez; Maria Chacon; Yonathan Rivas | 672h | 69,311.11 |
| 59 | 3.1.1.1 | **Elaborar prototipo funcional** | 14d | 2015-04-03 | 2015-04-14 |  | 0d | Domingo Hernandez; Maria Chacon; Yonathan Rivas | 504h | 52,511.11 |
| 60 | 3.1.1.1.1 | **Gestión y mantenimiento de promociones** | 6.75d | 2015-04-03 | 2015-04-09 |  | 0d | Domingo Hernandez; Maria Chacon; Yonathan Rivas | 162h | 18,311.11 |
| 61 | 3.1.1.1.1.1 | RF12 - Agregar promoción. | 15h | 2015-04-03 | 2015-04-07 |  | 0d | Domingo Hernandez; Maria Chacon; Yonathan Rivas | 45h | 6,611.11 |
| 62 | 3.1.1.1.1.2 | RF13 - Modificar Promoción. | 7h | 2015-04-07 | 2015-04-08 | 61 | 0d | Domingo Hernandez; Maria Chacon; Yonathan Rivas | 21h | 2,100 |
| 63 | 3.1.1.1.1.3 | RF14 - Eliminar Promoción. | 5h | 2015-04-08 | 2015-04-09 | 62 | 0d | Domingo Hernandez; Maria Chacon; Yonathan Rivas | 15h | 1,500 |
| 64 | 3.1.1.1.2 | **Mantenimiento y gestión por parte del administrador** | 7.25d | 2015-04-09 | 2015-04-14 | 60 | 0d | Domingo Hernandez; Maria Chacon; Yonathan Rivas | 174h | 17,400 |
| 65 | 3.1.1.1.2.1 | RF1-Estatus Lancha | 6h | 2015-04-09 | 2015-04-09 |  | 0d | Maria Chacon; Domingo Hernandez; Yonathan Rivas | 18h | 1,800 |
| 66 | 3.1.1.1.2.2 | RF2-Estado del destino | 10h | 2015-04-09 | 2015-04-13 | 65 | 0d | Yonathan Rivas; Domingo Hernandez; Maria Chacon | 30h | 3,000 |
| 67 | 3.1.1.1.2.3 | RF10 - Suspensión de viaje(Administrador) | 9h | 2015-04-13 | 2015-04-14 | 66 | 0d | Domingo Hernandez; Maria Chacon; Yonathan Rivas | 27h | 2,700 |
| 68 | 3.1.1.1.2.4 | RF20 - Desactivar usuario | 4h | 2015-04-14 | 2015-04-14 | 67 | 0d | Domingo Hernandez; Maria Chacon; Yonathan Rivas | 12h | 1,200 |
| 69 | 3.1.2 | **Fase de pruebas** | 4d | 2015-04-14 | 2015-04-16 | 58 | 0d |  | 24h | 2,400 |
| 70 | 3.1.2.1 | Plan de pruebas | 8h | 2015-04-14 | 2015-04-15 |  | 0d | Maria Chacon | 8h | 800 |
| 71 | 3.1.2.2 | Casos de prueba | 8h | 2015-04-15 | 2015-04-16 | 70 | 0d | Domingo Hernandez; Yonathan Rivas | 16h | 1,600 |
| 72 | 3.1.3 | **SQA** | 4.5d | 2015-04-16 | 2015-04-20 | 69 | 0d | Maria Chacon | 46h | 4,600 |
| 73 | 3.1.3.1 | Informe Tecnico | 8h | 2015-04-16 | 2015-04-17 |  | 0d | Maria Chacon | 8h | 800 |
| 74 | 3.1.3.2 | Plan de calidad | 10h | 2015-04-17 | 2015-04-20 | 73 | 0d | Maria Chacon; Yonathan Rivas | 20h | 2,000 |
